Schedule from MS Project, 2021-09-15 to 2022-01-05, costs in ¥, A marks actual dates.

## Calendars

- 标准: Mon-Fri 08:00-12:00, 13:00-17:00; Sat-Sun off.

## Resources

| Resource | Rate |
| --- | --- |
| 吴联想 | 49.56 |
| 郑航舰 | 49.56 |
| 王义博 | 49.56 |

## Schedule

| ID | WBS | Task | Type | Duration | Start | Finish | Predecessors | Complete | Remaining | Actual start | Actual finish | Constraint | Resources | Work | Actual work | Cost | Actual cost |
| --- | --- | --- | --- | --- | --- | --- | --- | --- | --- | --- | --- | --- | --- | --- | --- | --- | --- |
| 1 | 1 | **软件项目开发** |  | 81d? | 2021-09-15 A | 2022-01-05 |  | 35% | 52.96d? |  |  |  |  | 239h | 85h | 11,844.84 | 4,212.6 |
| 2 | 1.1 | **项目介绍及PPT** |  | 1d | 2021-09-15 A | 2021-09-15 A |  | 100% |  |  |  |  |  | 6h | 6h | 297.36 | 297.36 |
| 3 | 1.1.1 | 课题选择 |  | 0.25d | 2021-09-15 A | 2021-09-15 A |  | 100% |  |  |  |  | 吴联想 | 2h | 2h | 99.12 | 99.12 |
| 4 | 1.1.2 | 项目介绍word |  | 0.25d | 2021-09-15 A | 2021-09-15 A |  | 100% |  |  |  |  | 郑航舰 | 2h | 2h | 99.12 | 99.12 |
| 5 | 1.1.3 | 项目介绍PPT |  | 0.25d | 2021-09-15 A | 2021-09-15 A |  | 100% |  |  |  |  | 王义博 | 2h | 2h | 99.12 | 99.12 |
| 6 | 1.1.4 | 项目介绍评审 | manual | 1d | 2021-09-15 A | 2021-09-15 A |  | 100% |  |  |  |  |  |  |  |  |  |
| 7 | 1.2 | **项目计划及PPT** |  | 6d? | 2021-09-22 A | 2021-09-29 | 2 | 100% |  |  | 2021-09-28 |  |  | 8h | 8h | 396.48 | 396.48 |
| 8 | 1.2.1 | 小组会议 |  | 0.12d? | 2021-09-22 A | 2021-09-22 A |  | 100% |  |  |  |  | 吴联想; 王义博; 郑航舰 | 1h | 1h | 49.56 | 49.56 |
| 9 | 1.2.2 | 项目计划word初稿 |  | 0.25d? | 2021-09-22 A | 2021-09-22 A |  | 100% |  |  |  |  | 郑航舰 | 2h | 2h | 99.12 | 99.12 |
| 10 | 1.2.3 | 小组会议 |  | 0.12d? | 2021-09-24 A | 2021-09-24 A |  | 100% |  |  |  | start no earlier than 2021-09-24 | 吴联想 | 1h | 1h | 49.56 | 49.56 |
| 11 | 1.2.4 | 项目计划初版修订 |  | 0.25d? | 2021-09-27 A | 2021-09-27 A |  | 100% |  |  |  | start no earlier than 2021-09-27 | 郑航舰 | 2h | 2h | 99.12 | 99.12 |
| 12 | 1.2.5 | 项目计划PPT制作 |  | 0.25d? | 2021-09-28 A | 2021-09-28 A |  | 100% |  |  |  | start no earlier than 2021-09-28 | 王义博 | 2h | 2h | 99.12 | 99.12 |
| 13 | 1.2.6 | 项目计划评审 | manual | 1d | 2021-09-22 A | 2021-09-22 A |  | 100% |  |  |  |  |  |  |  |  |  |
| 14 | 1.3 | **项目计划修订** |  | 10d? | 2021-09-30 | 2021-10-13 A | 7 | 100% |  | 2021-10-02 |  |  |  | 13h | 13h | 644.28 | 644.28 |
| 15 | 1.3.1 | 项目计划修订 | manual | 2d | 2021-10-02 A | 2021-10-04 A |  | 100% |  |  |  |  | 郑航舰 | 2h | 2h | 99.12 | 99.12 |
| 16 | 1.3.2 | 小组会议 | manual | 1d | 2021-10-03 A | 2021-10-03 A |  | 100% |  |  |  |  | 吴联想; 王义博; 郑航舰 | 1h | 1h | 49.56 | 49.56 |
| 17 | 1.3.3 | 项目计划PPT修订 | manual | 2d | 2021-10-05 A | 2021-10-06 A |  | 100% |  |  |  |  | 王义博 | 2h | 2h | 99.12 | 99.12 |
| 18 | 1.3.4 | 团建 | manual | 1d | 2021-10-07 A | 2021-10-07 A |  | 100% |  |  |  |  | 吴联想 | 2h | 2h | 99.12 | 99.12 |
| 19 | 1.3.5 | 可行性分析 | manual | 1d | 2021-10-13 A | 2021-10-13 A |  | 100% |  |  |  |  | 吴联想 | 2h | 2h | 99.12 | 99.12 |
| 20 | 1.3.6 | 项目计划书修订 | manual | 1d | 2021-10-13 A | 2021-10-13 A |  | 100% |  |  |  |  | 郑航舰 | 2h | 2h | 99.12 | 99.12 |
| 21 | 1.3.7 | 项目计划PPT修订 | manual | 1d | 2021-10-13 A | 2021-10-13 A |  | 100% |  |  |  |  | 王义博 | 2h | 2h | 99.12 | 99.12 |
| 22 | 1.3.8 | 项目计划评审 | manual | 1d | 2021-10-13 A | 2021-10-13 A |  | 100% |  |  |  |  |  |  |  |  |  |
| 23 | 1.4 | **可行性分析报告** |  | 8d? | 2021-10-14 | 2021-10-23 A | 14 | 100% |  | 2021-10-15 |  |  |  | 29h | 29h | 1,437.24 | 1,437.24 |
| 24 | 1.4.1 | 小组会议 | manual | 1d | 2021-10-22 A | 2021-10-22 A |  | 100% |  |  |  |  | 吴联想; 王义博; 郑航舰 | 1h | 1h | 49.56 | 49.56 |
| 25 | 1.4.2 | 可行性分析报告初稿 | manual | 1d | 2021-10-16 A | 2021-10-16 A |  | 100% |  |  |  |  | 郑航舰 | 2h | 2h | 99.12 | 99.12 |
| 26 | 1.4.3 | 可行性分析 | manual | 1d | 2021-10-15 A | 2021-10-15 A |  | 100% |  |  |  |  | 吴联想 | 2h | 2h | 99.12 | 99.12 |
| 27 | 1.4.4 | 绘制数据流图 | manual | 1d | 2021-10-15 A | 2021-10-15 A |  | 100% |  |  |  |  | 郑航舰 | 2h | 2h | 99.12 | 99.12 |
| 28 | 1.4.5 | 绘制系统流程图 | manual | 1d | 2021-10-15 A | 2021-10-15 A |  | 100% |  |  |  |  | 郑航舰 | 2h | 2h | 99.12 | 99.12 |
| 29 | 1.4.6 | 可行性分析修改 | manual | 1d | 2021-10-16 A | 2021-10-16 A |  | 100% |  |  |  |  | 王义博 | 2h | 2h | 99.12 | 99.12 |
| 30 | 1.4.7 | 可行性分析报告评审 | manual | 1d | 2021-10-20 A | 2021-10-20 A |  | 100% |  |  |  |  |  |  |  |  |  |
| 31 | 1.4.8 | 复查系统规模和目标 | manual | 1d | 2021-10-22 A | 2021-10-22 A |  | 100% |  |  |  |  | 吴联想 | 2h | 2h | 99.12 | 99.12 |
| 32 | 1.4.9 | 研究目前正在使用的系统 | manual | 1d | 2021-10-23 A | 2021-10-23 A |  | 100% |  |  |  |  | 王义博 | 2h | 2h | 99.12 | 99.12 |
| 33 | 1.4.10 | 导出新系统的高层逻辑模型 | manual | 1d | 2021-10-23 A | 2021-10-23 A |  | 100% |  |  |  |  | 王义博 | 2h | 2h | 99.12 | 99.12 |
| 34 | 1.4.11 | 进一步定义问题 | manual | 1d | 2021-10-23 A | 2021-10-23 A |  | 100% |  |  |  |  | 王义博; 吴联想 | 2h | 2h | 99.12 | 99.12 |
| 35 | 1.4.12 | 导出和评价供选择的解法 | manual | 1d | 2021-10-23 A | 2021-10-23 A |  | 100% |  |  |  |  | 王义博; 郑航舰 | 2h | 2h | 99.12 | 99.12 |
| 36 | 1.4.13 | 推荐行动方针 | manual | 1d | 2021-10-23 A | 2021-10-23 A |  | 100% |  |  |  |  | 郑航舰 | 2h | 2h | 99.12 | 99.12 |
| 37 | 1.4.14 | 草拟开发计划 | manual | 1d | 2021-10-23 A | 2021-10-23 A |  | 100% |  |  |  |  |  |  |  |  |  |
| 38 | 1.4.15 | 书写文档提交审查 | manual | 1d | 2021-10-23 A | 2021-10-23 A |  | 100% |  |  |  |  | 吴联想 | 2h | 2h | 99.12 | 99.12 |
| 39 | 1.4.16 | 项目计划书修订 | manual | 1d | 2021-10-23 A | 2021-10-23 A |  | 100% |  |  |  |  | 郑航舰 | 2h | 2h | 99.12 | 99.12 |
| 40 | 1.4.17 | 可行性分析报告修订 | manual | 1d | 2021-10-23 A | 2021-10-23 A |  | 100% |  |  |  |  | 郑航舰 | 2h | 2h | 99.12 | 99.12 |

| ID | WBS | Task | Type | Duration | Start | Finish | Predecessors | Complete | Remaining | Actual start | Resources | Work | Actual work | Cost | Actual cost |
| --- | --- | --- | --- | --- | --- | --- | --- | --- | --- | --- | --- | --- | --- | --- | --- |
| 41 | 1.5 | **需求说明SRS，需求评审PPT** |  | 5d | 2021-10-21 | 2021-10-27 | 23 | 78% | 1.1d | 2021-10-22 |  | 35h | 29h | 1,734.6 | 1,437.24 |
| 42 | 1.5.1 | 需求说明初稿 | manual | 0.25d | 2021-10-22 A | 2021-10-22 A |  | 100% |  |  | 郑航舰 | 2h | 2h | 99.12 | 99.12 |
| 43 | 1.5.2 | 小组会议 | manual | 1d | 2021-10-23 A | 2021-10-23 A |  | 100% |  |  | 吴联想; 王义博; 郑航舰 | 1h | 1h | 49.56 | 49.56 |
| 44 | 1.5.3 | 快速原型设计 | manual | 1d | 2021-10-24 A | 2021-10-24 A |  | 100% |  |  | 郑航舰 | 2h | 2h | 99.12 | 99.12 |
| 45 | 1.5.4 | **确定对系统的综合要求** |  | 0d | 2021-10-24 A | 2021-10-24 A |  | 100% |  |  | 郑航舰; 吴联想 | 16h | 16h | 792.96 | 792.96 |
| 46 | 1.5.4.1 | 功能需求 | manual | 1d | 2021-10-24 A | 2021-10-24 A |  | 100% |  |  | 吴联想 | 2h | 2h | 99.12 | 99.12 |
| 47 | 1.5.4.2 | 性能需求 | manual | 1d | 2021-10-24 A | 2021-10-24 A |  | 100% |  |  | 吴联想 | 2h | 2h | 99.12 | 99.12 |
| 48 | 1.5.4.3 | 可靠性和可用性需求 | manual | 1d | 2021-10-24 A | 2021-10-24 A |  | 100% |  |  | 吴联想 | 2h | 2h | 99.12 | 99.12 |
| 49 | 1.5.4.4 | 出错处理需求 | manual | 1d | 2021-10-24 A | 2021-10-24 A |  | 100% |  |  | 吴联想 | 2h | 2h | 99.12 | 99.12 |
| 50 | 1.5.4.5 | 接口需求 | manual | 1d | 2021-10-24 A | 2021-10-24 A |  | 100% |  |  | 郑航舰 | 2h | 2h | 99.12 | 99.12 |
| 51 | 1.5.4.6 | 约束 | manual | 1d | 2021-10-24 A | 2021-10-24 A |  | 100% |  |  | 郑航舰 | 2h | 2h | 99.12 | 99.12 |
| 52 | 1.5.4.7 | 逆向需求 | manual | 1d | 2021-10-24 A | 2021-10-24 A |  | 100% |  |  | 郑航舰 | 2h | 2h | 99.12 | 99.12 |
| 53 | 1.5.4.8 | 将来可能提出的需求 | manual | 1d | 2021-10-24 A | 2021-10-24 A |  | 100% |  |  | 郑航舰 | 2h | 2h | 99.12 | 99.12 |
| 54 | 1.5.5 | 分析系统的数据要求 | manual | 1d | 2021-10-24 | 2021-10-24 |  |  |  |  | 王义博 | 2h |  | 99.12 |  |
| 55 | 1.5.6 | **导出系统的逻辑模型** |  | 0d | 2021-10-24 A | 2021-10-24 A |  | 100% |  |  | 王义博 | 8h | 8h | 396.48 | 396.48 |
| 56 | 1.5.6.1 | 绘制ER图 | manual | 1d | 2021-10-24 A | 2021-10-24 A |  | 100% |  |  | 王义博 | 2h | 2h | 99.12 | 99.12 |
| 57 | 1.5.6.2 | 绘制层次方框图 | manual | 1d | 2021-10-24 A | 2021-10-24 A |  | 100% |  |  | 王义博 | 2h | 2h | 99.12 | 99.12 |
| 58 | 1.5.6.3 | 数据流图 | manual | 1d | 2021-10-24 A | 2021-10-24 A |  | 100% |  |  | 王义博 | 2h | 2h | 99.12 | 99.12 |
| 59 | 1.5.6.4 | 数据字典 | manual | 1d | 2021-10-24 A | 2021-10-24 A |  | 100% |  |  | 王义博 | 2h | 2h | 99.12 | 99.12 |
| 60 | 1.5.7 | 需求说明初稿修改 | manual | 1d | 2021-10-23 | 2021-10-23 |  |  |  |  | 郑航舰 | 2h |  | 99.12 |  |
| 61 | 1.5.8 | 需求说明PPT | manual | 2d | 2021-10-23 | 2021-10-25 |  |  |  |  | 王义博 | 2h |  | 99.12 |  |
| 62 | 1.6 | **SRS修订** |  | 5d | 2021-10-28 | 2021-11-03 | 41 |  |  |  |  | 8h |  | 396.48 |  |
| 63 | 1.6.1 | 访谈 | manual | 2d | 2021-10-29 | 2021-11-01 |  |  |  |  | 吴联想 | 4h |  | 198.24 |  |
| 64 | 1.6.2 | 小组会议 | manual | 1d | 2021-10-29 | 2021-10-29 |  |  |  |  | 吴联想; 王义博; 郑航舰 | 1h |  | 49.56 |  |
| 65 | 1.6.3 | 需求说明修订 | manual | 1d | 2021-10-29 | 2021-10-29 |  |  |  |  | 郑航舰 | 2h |  | 99.12 |  |
| 66 | 1.6.4 | 需求说明PPT修改 | manual | 1d | 2021-10-30 | 2021-10-30 |  |  |  |  | 郑航舰 | 1h |  | 49.56 |  |

| ID | WBS | Task | Type | Duration | Start | Finish | Predecessors | Resources | Work | Cost |
| --- | --- | --- | --- | --- | --- | --- | --- | --- | --- | --- |
| 67 | 1.7 | **总体设计报告** |  | 5d | 2021-11-04 | 2021-11-10 | 62 |  | 18h | 892.08 |
| 68 | 1.7.1 | 小组会议 | manual | 1d | 2021-11-05 | 2021-11-05 |  | 吴联想; 王义博; 郑航舰 | 1h | 49.56 |
| 69 | 1.7.2 | 总体设计报告初稿 | manual | 2d | 2021-11-05 | 2021-11-08 |  | 吴联想; 郑航舰 | 2h | 99.12 |
| 70 | 1.7.3 | 设想供选择的方案 | manual | 1d | 2021-11-05 | 2021-11-05 |  | 吴联想 | 1h | 49.56 |
| 71 | 1.7.4 | 选择合理的方案 | manual | 1d | 2021-11-05 | 2021-11-05 |  | 王义博 | 1h | 49.56 |
| 72 | 1.7.5 | 推荐最佳方案 | manual | 1d | 2021-11-05 | 2021-11-05 |  | 王义博 | 1h | 49.56 |
| 73 | 1.7.6 | 功能分解 | manual | 1d | 2021-11-05 | 2021-11-05 |  | 吴联想 | 1h | 49.56 |
| 74 | 1.7.7 | 设计软件结构 | manual | 2d | 2021-11-06 | 2021-11-08 |  | 吴联想 | 3h | 148.68 |
| 75 | 1.7.8 | 设计数据库 | manual | 2d | 2021-11-06 | 2021-11-08 |  | 王义博 | 3h | 148.68 |
| 76 | 1.7.9 | 制定测试计划 | manual | 2d | 2021-11-06 | 2021-11-08 |  | 郑航舰 | 2h | 99.12 |
| 77 | 1.7.10 | 书写文档 | manual | 1d | 2021-11-06 | 2021-11-06 |  | 郑航舰 | 2h | 99.12 |
| 78 | 1.7.11 | 审查和复查 | manual | 1d | 2021-11-06 | 2021-11-06 |  | 吴联想 | 1h | 49.56 |
| 79 | 1.8 | **详细设计报告** |  | 5d | 2021-11-11 | 2021-11-17 | 67 |  | 14h | 693.84 |
| 80 | 1.8.1 | 小组会议 | manual | 1d | 2021-11-12 | 2021-11-12 |  | 吴联想; 王义博; 郑航舰 | 1h | 49.56 |
| 81 | 1.8.2 | 详细设计报告初稿 | manual | 2d | 2021-11-12 | 2021-11-15 |  | 郑航舰 | 2h | 99.12 |
| 82 | 1.8.3 | 人机界面完善 | manual | 1d | 2021-11-12 | 2021-11-12 |  | 吴联想 | 2h | 99.12 |
| 83 | 1.8.4 | 过程设计 | manual | 1d | 2021-11-12 | 2021-11-12 |  | 王义博 | 2h | 99.12 |
| 84 | 1.8.5 | PDL编写 | manual | 2d | 2021-11-13 | 2021-11-15 |  | 王义博 | 2h | 99.12 |
| 85 | 1.8.6 | 小组会议 | manual | 1d | 2021-11-13 | 2021-11-13 |  | 吴联想 | 1h | 49.56 |
| 86 | 1.8.7 | 详细设计报告初稿修订 | manual | 2d | 2021-11-13 | 2021-11-15 |  | 郑航舰 | 2h | 99.12 |
| 87 | 1.8.8 | 详细设计报告PPT制作 | manual | 2d | 2021-11-13 | 2021-11-15 |  | 王义博 | 2h | 99.12 |
| 88 | 1.9 | **总体设计及详细设计修订+翻转PPT1** |  | 5d | 2021-11-18 | 2021-11-24 | 79 |  | 3h | 148.68 |
| 89 | 1.9.1 | 小组会议 | manual | 1d | 2021-11-19 | 2021-11-19 |  | 吴联想; 王义博 | 1h | 49.56 |
| 90 | 1.9.2 | 总体提报告及详细报告修订 | manual | 1d | 2021-11-19 | 2021-11-19 |  | 郑航舰 | 1h | 49.56 |
| 91 | 1.9.3 | 总体提报告及详细报告PPT修订 | manual | 1d | 2021-11-19 | 2021-11-19 |  | 王义博 | 1h | 49.56 |

| ID | WBS | Task | Type | Duration | Start | Finish | Predecessors | Resources | Work | Cost |
| --- | --- | --- | --- | --- | --- | --- | --- | --- | --- | --- |
| 92 | 1.10 | **代码清单+测试用例+翻转PPT2** |  | 5d? | 2021-11-25 | 2021-12-01 | 88 |  | 67h | 3,320.52 |
| 93 | 1.10.1 | 小组会议 | manual | 1d | 2021-11-25 | 2021-11-25 |  | 王义博; 吴联想; 郑航舰 | 1h | 49.56 |
| 94 | 1.10.2 | 确定代码编写风格 | manual | 1d | 2021-11-25 | 2021-11-25 |  | 吴联想 | 2h | 99.12 |
| 95 | 1.10.3 | 数据库建立 | manual | 1d | 2021-11-25 | 2021-11-25 |  | 王义博 | 2h | 99.12 |
| 96 | 1.10.4 | 服务器部署 | manual | 1d | 2021-11-25 | 2021-11-25 |  | 郑航舰 | 2h | 99.12 |
| 97 | 1.10.5 | **代码编写及测试** |  | 4d | 2021-11-26 | 2021-12-01 |  |  | 60h | 2,973.6 |
| 98 | 1.10.5.1 | **代码编写** |  | 4d | 2021-11-26 | 2021-12-01 |  |  | 56h | 2,775.36 |
| 99 | 1.10.5.1.1 | 登录界面 | manual | 1d | 2021-11-26 | 2021-11-26 |  | 吴联想 | 4h | 198.24 |
| 100 | 1.10.5.1.2 | 注册与忘记密码界面 | manual | 1d | 2021-11-26 | 2021-11-26 |  | 吴联想 | 4h | 198.24 |
| 101 | 1.10.5.1.3 | 表白墙（发帖）模块 | manual | 1d | 2021-11-26 | 2021-11-26 |  | 王义博 | 4h | 198.24 |
| 102 | 1.10.5.1.4 | 回帖模块 | manual | 1d | 2021-11-26 | 2021-11-26 |  | 王义博 | 4h | 198.24 |
| 103 | 1.10.5.1.5 | 个人页面 | manual | 1d | 2021-11-26 | 2021-11-26 |  | 郑航舰 | 4h | 198.24 |
| 104 | 1.10.5.1.6 | 管理员显示用户信息 | manual | 1d | 2021-11-26 | 2021-11-26 |  | 郑航舰 | 4h | 198.24 |
| 105 | 1.10.5.1.7 | 管理员添加用户 | manual | 1d | 2021-11-26 | 2021-11-26 |  | 郑航舰 | 4h | 198.24 |
| 106 | 1.10.5.1.8 | 管理员删除用户 | manual | 1d | 2021-11-26 | 2021-11-26 |  | 吴联想 | 4h | 198.24 |
| 107 | 1.10.5.1.9 | 修改密码页面 | manual | 1d | 2021-11-26 | 2021-11-26 |  | 王义博 | 4h | 198.24 |
| 108 | 1.10.5.1.10 | 页面整合与跳转逻辑 | manual | 1d | 2021-11-26 | 2021-11-26 |  | 吴联想 | 4h | 198.24 |
| 109 | 1.10.5.1.11 | 代码走查 | manual | 1d | 2021-11-27 | 2021-11-27 |  | 吴联想 | 4h | 198.24 |
| 110 | 1.10.5.1.12 | 登录模块实现 | manual | 1d | 2021-11-27 | 2021-11-27 |  | 郑航舰 | 4h | 198.24 |
| 111 | 1.10.5.1.13 | 管理员模块实现 | manual | 1d | 2021-11-27 | 2021-11-27 |  | 王义博 | 4h | 198.24 |
| 112 | 1.10.5.1.14 | 代码走查 | manual | 1d | 2021-11-27 | 2021-11-27 |  | 吴联想 | 2h | 99.12 |
| 113 | 1.10.5.1.15 | 代码整合 | manual | 1d | 2021-11-27 | 2021-11-27 |  | 吴联想; 王义博; 郑航舰 | 2h | 99.12 |
| 114 | 1.10.5.2 | **软件测试** |  | 4d | 2021-11-28 | 2021-12-01 | 98 |  | 4h | 198.24 |
| 115 | 1.10.5.2.1 | 单元测试 | manual | 1d | 2021-11-28 | 2021-11-28 |  | 王义博 | 4h | 198.24 |
| 116 | 1.10.5.2.2 | 集成测试 | milestone, manual | 0d | 2021-12-01 | 2021-12-01 |  | 郑航舰 |  |  |
| 117 | 1.10.5.2.3 | 系统测试 | milestone, manual | 0d | 2021-12-01 | 2021-12-01 |  | 吴联想 |  |  |

| ID | WBS | Task | Type | Duration | Start | Finish | Predecessors | Resources | Work | Cost |
| --- | --- | --- | --- | --- | --- | --- | --- | --- | --- | --- |
| 118 | 1.11 | **系统测试报告** |  | 5d | 2021-12-02 | 2021-12-08 | 92 |  | 7h | 346.92 |
| 119 | 1.11.1 | 小组会议 | manual | 1d | 2021-12-03 | 2021-12-03 |  | 吴联想; 王义博; 郑航舰 | 1h | 49.56 |
| 120 | 1.11.2 | 系统实现及测试报告初稿 | manual | 2d | 2021-12-03 | 2021-12-06 |  | 吴联想 | 2h | 99.12 |
| 121 | 1.11.3 | 系统实现及测试报告初稿修订 | manual | 1d | 2021-12-04 | 2021-12-04 |  | 郑航舰 | 2h | 99.12 |
| 122 | 1.11.4 | 系统实现及测试报告PPT制作 | manual | 1d | 2021-12-04 | 2021-12-04 |  | 王义博 | 2h | 99.12 |
| 123 | 1.12 | **测试报告修订** |  | 5d? | 2021-12-09 | 2021-12-15 | 118 |  | 17h | 842.52 |
| 124 | 1.12.1 | 小组会议 | manual | 1d | 2021-12-10 | 2021-12-10 |  | 王义博; 吴联想; 郑航舰 | 1h | 49.56 |
| 125 | 1.12.2 | 用户确认 | manual | 1d | 2021-12-10 | 2021-12-10 |  | 郑航舰 | 2h | 99.12 |
| 126 | 1.12.3 | 软件修改 | manual | 1d | 2021-12-10 | 2021-12-10 |  | 吴联想 | 2h | 99.12 |
| 127 | 1.12.4 | 重新测试 | manual | 1d | 2021-12-10 | 2021-12-10 |  | 王义博 | 4h | 198.24 |
| 128 | 1.12.5 | 系统实现及测试报告修订 | manual | 2d | 2021-12-11 | 2021-12-13 |  | 郑航舰 | 4h | 198.24 |
| 129 | 1.12.6 | 系统实现及测试报告PPT修订 | manual | 2d | 2021-12-11 | 2021-12-13 |  | 王义博 | 4h | 198.24 |
| 130 | 1.13 | **项目总结报告，总评审PPT** |  | 10d | 2021-12-16 | 2021-12-29 | 123 |  | 13h | 644.28 |
| 131 | 1.13.1 | 小组会议 | manual | 1d | 2021-12-17 | 2021-12-17 |  | 吴联想; 王义博; 郑航舰 | 1h | 49.56 |
| 132 | 1.13.2 | 修改项目计划 | manual | 2d | 2021-12-17 | 2021-12-20 |  | 郑航舰 | 2h | 99.12 |
| 133 | 1.13.3 | 修改需求分析 | manual | 2d | 2021-12-17 | 2021-12-20 |  | 吴联想 | 2h | 99.12 |
| 134 | 1.13.4 | 用户bug反馈，修改 | manual | 2d | 2021-12-17 | 2021-12-20 |  | 吴联想 | 2h | 99.12 |
| 135 | 1.13.5 | 修改设计报告 | manual | 1d | 2021-12-17 | 2021-12-17 |  | 吴联想 | 2h | 99.12 |
| 136 | 1.13.6 | 项目总结报告初稿 | manual | 2d | 2021-12-18 | 2021-12-20 |  | 郑航舰 | 1h | 49.56 |
| 137 | 1.13.7 | 项目总结报告修改 | manual | 1d | 2021-12-18 | 2021-12-18 |  | 郑航舰 | 1h | 49.56 |
| 138 | 1.13.8 | 项目总结PPT制作 | manual | 1d | 2021-12-18 | 2021-12-18 |  | 王义博 | 2h | 99.12 |
| 139 | 1.14 | 课程作业评审 | manual | 1d | 2022-01-05 | 2022-01-05 |  | 王义博; 吴联想; 郑航舰 | 1h | 49.56 |
